# Analytics and Prediction System for CE Curriculum administrators

How a schedule from MS Project changed from version to version. A marks actual dates.

## Version 1 (saved 2022-08-13, file GrantChat.mpp)

Note of the change: update ก้าวหน้า1

| ID | WBS | Task | Duration | Start | Finish | Predecessors | Total float | Constraint |
| --- | --- | --- | --- | --- | --- | --- | --- | --- |
| 1 |  | ศึกษาทฤษฎีที่เกี่ยวข้อง | 23d? | 2022-08-01 | 2022-08-31 |  | 2d | finish no earlier than 2022-08-31 |
| 2 | 2 | **เตรียม Server** | 6d | 2022-09-01 | 2022-09-08 | 1 |  |  |
| 3 |  | ติดตั้ง SQL DB | 2d? | 2022-09-01 | 2022-09-02 |  | 162d | start no earlier than 2022-09-01 |
| 4 |  | ติดตั้ง Python | 2d | 2022-09-03 | 2022-09-04 |  |  | start no earlier than 2022-09-03 |
| 5 |  | ติดตั้ง Django Framework | 2d? | 2022-09-05 | 2022-09-06 |  | 160d | finish no earlier than 2022-09-06 |
| 6 |  | ติดตั้ง React | 1d? | 2022-09-07 | 2022-09-07 |  | 159d | start no earlier than 2022-09-07 |
| 7 | 3 | **เตรียม Data สำหรับการพัฒนา** | 8d | 2022-09-08 | 2022-09-15 |  |  |  |
| 8 |  | ออกแบบ Schema | 3d? | 2022-09-08 | 2022-09-10 |  | 153d | start no earlier than 2022-09-08 |
| 9 |  | ออกแบบ Relational Database | 3d? | 2022-09-11 | 2022-09-13 | 8 | 153d | finish no earlier than 2022-09-13 |
| 10 |  | นำข้อมูลเข้า Database | 1d? | 2022-09-13 | 2022-09-13 |  | 151d | start no earlier than 2022-09-13 |
| 11 |  | Clean Data | 1d? | 2022-09-14 | 2022-09-14 | 10 | 151d |  |
| 12 |  | Transfrom data | 1d? | 2022-09-15 | 2022-09-15 | 11 | 151d |  |
| 13 | 4 | **พัฒนา Similarity Model** | 31d | 2022-09-08 | 2022-10-15 |  |  |  |
| 14 |  | ทดลอง Model KNN และ Cosine | 13d? | 2022-09-08 | 2022-09-22 |  | 105d | finish no earlier than 2022-09-22 |
| 15 |  | พ้ฒนา Model สำหรับหมวด Software | 7d? | 2022-09-23 | 2022-09-30 | 14 | 105d | start no earlier than 2022-09-23 |
| 16 |  | พัฒนา Model สำหรับหมวด Hardware | 6d | 2022-09-23 | 2022-09-29 | 14 |  | start no earlier than 2022-10-01 |
| 17 |  | พัฒนา Model สำหับหมวด Network | 6d | 2022-10-01 | 2022-10-07 | 14 |  | start no earlier than 2022-10-01 |
| 18 |  | Test Model | 6d | 2022-10-10 | 2022-10-15 | 17, 15, 16 |  |  |
| 19 | 5 | **พัฒนา Job Classification Model** | 24d | 2022-10-16 | 2022-11-15 |  |  |  |
| 20 |  | ทดลอง Model KNN และ Decision Tree | 14d? | 2022-10-16 | 2022-11-01 |  | 77d | finish no earlier than 2022-11-01 |
| 21 |  | พัฒนา Model Classification | 6d? | 2022-11-02 | 2022-11-09 | 20 | 77d | start no earlier than 2022-11-02 |
| 22 |  | Test Model | 4d? | 2022-11-10 | 2022-11-15 | 21 | 77d | start no earlier than 2022-11-10 |
| 23 | 6 | **พัฒนา Django Web App** | 72d | 2022-12-15 | 2023-03-15 |  |  |  |
| 24 | 6.1 | **พัฒนา Backend Function** | 26d | 2022-12-15 | 2023-01-15 |  |  |  |
| 25 |  | พัฒนา Function Map Subject Group | 4d? | 2022-12-15 | 2022-12-20 |  | 52d | finish no earlier than 2022-12-20 |
| 26 |  | พัฒนา Call Fuction similarity หลักสูตรปกติ | 3d? | 2022-12-22 | 2022-12-25 | 25, 18, 22 | 51d | finish no earlier than 2022-12-25 |
| 27 |  | พัฒนา Call Fuction similarity หลักสูตรต่อเนื่อง | 3d? | 2022-12-22 | 2022-12-25 | 25, 18, 22 | 51d | finish no earlier than 2022-12-25 |
| 28 |  | พัฒนา Function Analytic Data | 11d? | 2022-12-26 | 2023-01-07 | 27, 25, 26 | 65d | start no earlier than 2022-12-26 |
| 29 |  | พัฒนา Function Sum Occupations | 3d | 2023-01-08 | 2023-01-10 |  |  | start no earlier than 2023-01-08 |
| 30 |  | พัฒนา Function Recommend Elective Subject | 3d? | 2023-01-11 | 2023-01-13 |  | 59d | finish no earlier than 2023-01-13 |
| 31 | 6.2 | **พัฒนา API** | 26d | 2022-12-15 | 2023-01-15 |  |  |  |
| 32 |  | พัฒนา API Simple CSV Generator | 6d? | 2022-12-15 | 2022-12-22 |  | 78d | start no earlier than 2022-12-15 |
| 33 |  | พัฒนา API Request All Prediction Handler | 6d? | 2022-12-26 | 2023-01-02 | 26, 27 | 51d |  |
| 34 |  | พัฒนา API Request All Outcome Predict of All Student | 1d? | 2023-01-03 | 2023-01-03 | 33 | 69d | start no earlier than 2022-12-29 |
| 35 |  | พัฒนา API Calculate overall (old) Outcome | 3d | 2022-12-31 | 2023-01-03 |  |  | start no earlier than 2022-12-31 |
| 36 |  | พัฒนา API Request Elective Subject | 4d? | 2023-01-05 | 2023-01-08 |  | 64d | finish no earlier than 2023-01-08 |
| 37 |  | พัฒนา API Add Update Edit | 5d? | 2023-01-08 | 2023-01-12 |  | 60d | finish no earlier than 2023-01-12 |
| 38 |  | พัฒนา API Login Handler | 3d? | 2023-01-12 | 2023-01-15 |  | 58d | finish no earlier than 2023-01-15 |
| 39 | 6.3 | **พัฒนา Frontend** | 17d | 2023-01-16 | 2023-02-07 |  |  |  |
| 40 |  | พัฒนาหน้าการใช้งานสำหรับบุคคทั่วไป | 6d? | 2023-01-16 | 2023-01-23 |  | 52d | finish no earlier than 2023-01-23 |
| 41 |  | พัฒนาหน้าการใช้งานสำหรับนักศึกษา | 6d? | 2023-01-24 | 2023-01-31 |  | 46d | finish no earlier than 2023-01-31 |
| 42 |  | พัฒนาหน้าการใช้งานสำหรับกรรมการหลักสูตร | 5d? | 2023-02-01 | 2023-02-07 |  | 31d | finish no earlier than 2023-02-07 |
| 43 | 6.4 | **ทดสอบการทำงานร่วมกัน** | 10d | 2023-02-08 | 2023-02-20 | 42 |  |  |
| 44 |  | ทดสอบการทำงาน Backend กับ Model | 4d? | 2023-02-08 | 2023-02-12 | 13, 19, 31 | 31d | start no earlier than 2023-02-08 |
| 45 |  | ทดสอบการทำงาน Frontend กับ Backend | 4d? | 2023-02-13 | 2023-02-16 | 44, 24, 31, 39 | 31d | finish no earlier than 2023-02-15 |
| 46 |  | ทดสอบการทำงานทั้งหมด | 2d? | 2023-02-17 | 2023-02-20 | 44, 45 | 31d | finish no earlier than 2023-02-20 |
| 47 | 6.5 | **Deploy Production** | 19d | 2023-02-21 | 2023-03-15 | 24, 31, 39, 43 |  |  |
| 48 |  | Deploy Django | 5d? | 2023-02-21 | 2023-02-25 |  | 12d | start no earlier than 2023-02-21 |
| 49 |  | Deploy React | 5d? | 2023-02-21 | 2023-02-25 |  | 12d | finish no earlier than 2023-02-25 |
| 50 |  | ทดสอบการทำงาน Backend กับ Model (Deploy) | 4d? | 2023-02-26 | 2023-03-01 | 48 | 12d | finish no earlier than 2023-03-01 |
| 51 |  | ทดสอบการทำงาน Frontend กับ Backend (Deploy) | 4d? | 2023-02-26 | 2023-03-01 | 48, 49 | 12d | finish no earlier than 2023-03-01 |
| 52 |  | ทดสอบการทำงานทั้งหมด | 4d? | 2023-03-02 | 2023-03-07 | 51, 48, 49, 50 | 12d |  |
| 53 |  | พัฒนาระบบ CI/CD | 6d? | 2023-03-08 | 2023-03-15 | 52 | 12d | start no earlier than 2023-03-08 |
| 54 | 7 | **สรุปผลทำ ปริญญานิพนธ์** | 106d | 2022-11-15 | 2023-03-31 |  |  |  |
| 55 |  | รายงานสำหรับ Project 1 | 15d? | 2022-11-15 | 2022-12-05 |  | 91d | finish no earlier than 2022-12-05 |
| 56 |  | รายงานสำหรับ Project 2 | 11d? | 2023-03-01 | 2023-03-15 |  | 12d | finish no earlier than 2023-03-15 |
| 57 |  | รวมรายงาน | 13d? | 2023-03-15 | 2023-03-31 |  | 0d | start no earlier than 2023-03-15 |

## Version 2 (saved 2022-08-25, file GrantChat.mpp)

Note of the change: อัพๆ

Last finish stays 2023-03-31.

Changed:

| ID | Task | Duration |
| --- | --- | --- |
| 2 | **เตรียม Server** | 6d → 6d? |
| 7 | **เตรียม Data สำหรับการพัฒนา** | 8d → 8d? |
| 13 | **พัฒนา Similarity Model** | 31d → 31d? |
| 19 | **พัฒนา Job Classification Model** | 24d → 24d? |
| 23 | **พัฒนา Django Web App** | 72d → 72d? |
| 24 | **พัฒนา Backend Function** | 26d → 26d? |
| 31 | **พัฒนา API** | 26d → 26d? |
| 39 | **พัฒนา Frontend** | 17d → 17d? |
| 43 | **ทดสอบการทำงานร่วมกัน** | 10d → 10d? |
| 47 | **Deploy Production** | 19d → 19d? |
| 54 | **สรุปผลทำ ปริญญานิพนธ์** | 106d → 106d? |

## Version 3 (saved 2022-08-26, file GrantChat.mpp)

Note of the change: update review paper 1

Last finish stays 2023-03-31. Complete tasks 0 → 4.

Changed:

| ID | Task | Start | Finish | Complete | Total float | Other |
| --- | --- | --- | --- | --- | --- | --- |
| 1 | ศึกษาทฤษฎีที่เกี่ยวข้อง | 2022-08-01 A |  | 0% → 25% | 2d → 0d | resources none → All |
| 2 | **เตรียม Server** | 2022-09-01 A |  | 0% → 80% |  | resources none → Dev1 |
| 3 | ติดตั้ง SQL DB | 2022-09-01 A | 2022-09-02 A | 0% → 100% | 162d → none | resources none → Dev1 |
| 4 | ติดตั้ง Python | 2022-09-03 A | 2022-09-04 A | 0% → 100% |  | resources none → Dev1 |
| 5 | ติดตั้ง Django Framework | 2022-09-05 A |  | 0% → 80% |  | resources none → Dev1 |
| 6 | ติดตั้ง React |  |  |  |  | resources none → Dev1 |
| 7 | **เตรียม Data สำหรับการพัฒนา** | 2022-09-08 A |  | 0% → 67% |  | resources none → Dev1 |
| 8 | ออกแบบ Schema | 2022-09-08 A | 2022-09-10 A | 0% → 100% | 153d → none | resources none → Dev1 |
| 9 | ออกแบบ Relational Database | 2022-09-11 A | 2022-09-13 A | 0% → 100% | 153d → none | resources none → Dev1 |
| 10 | นำข้อมูลเข้า Database |  |  |  |  | resources none → Dev1 |
| 11 | Clean Data |  |  |  |  | resources none → Dev1 |
| 12 | Transfrom data |  |  |  |  | resources none → Dev1 |
| 13 | **พัฒนา Similarity Model** | 2022-09-08 A |  | 0% → 3% |  | resources none → Dev2 |
| 14 | ทดลอง Model KNN และ Cosine | 2022-09-08 A |  | 0% → 10% |  | resources none → Dev2 |
| 15 | พ้ฒนา Model สำหรับหมวด Software |  |  |  |  | resources none → Dev2 |
| 16 | พัฒนา Model สำหรับหมวด Hardware |  |  |  |  | resources none → Dev2 |
| 17 | พัฒนา Model สำหับหมวด Network |  |  |  |  | resources none → Dev2 |
| 18 | Test Model |  |  |  |  | resources none → Dev2 |
| 19 | **พัฒนา Job Classification Model** |  |  |  |  | resources none → Dev1 |
| 20 | ทดลอง Model KNN และ Decision Tree |  |  |  |  | resources none → Dev1 |
| 21 | พัฒนา Model Classification |  |  |  |  | resources none → Dev1 |
| 22 | Test Model |  |  |  |  | resources none → Dev1 |
| 23 | **พัฒนา Django Web App** |  |  |  |  | resources none → All |
| 24 | **พัฒนา Backend Function** |  |  |  |  | resources none → Dev1 |
| 25 | พัฒนา Function Map Subject Group |  |  |  |  | resources none → Dev1 |
| 26 | พัฒนา Call Fuction similarity หลักสูตรปกติ |  |  |  |  | resources none → Dev1 |
| 27 | พัฒนา Call Fuction similarity หลักสูตรต่อเนื่อง |  |  |  |  | resources none → Dev1 |
| 28 | พัฒนา Function Analytic Data |  |  |  |  | resources none → Dev1 |
| 29 | พัฒนา Function Sum Occupations |  |  |  |  | resources none → Dev1 |
| 30 | พัฒนา Function Recommend Elective Subject |  |  |  |  | resources none → Dev1 |
| 31 | **พัฒนา API** |  |  |  |  | resources none → Dev2 |
| 32 | พัฒนา API Simple CSV Generator |  |  |  |  | resources none → Dev2 |
| 33 | พัฒนา API Request All Prediction Handler |  |  |  |  | resources none → Dev2 |
| 34 | พัฒนา API Request All Outcome Predict of All Student |  |  |  |  | resources none → Dev2 |
| 35 | พัฒนา API Calculate overall (old) Outcome |  |  |  |  | resources none → Dev2 |
| 36 | พัฒนา API Request Elective Subject |  |  |  |  | resources none → Dev2 |
| 37 | พัฒนา API Add Update Edit |  |  |  |  | resources none → Dev2 |
| 38 | พัฒนา API Login Handler |  |  |  |  | resources none → Dev2 |
| 39 | **พัฒนา Frontend** |  |  |  |  | resources none → All |
| 40 | พัฒนาหน้าการใช้งานสำหรับบุคคทั่วไป |  |  |  |  | resources none → All |
| 41 | พัฒนาหน้าการใช้งานสำหรับนักศึกษา |  |  |  |  | resources none → All |
| 42 | พัฒนาหน้าการใช้งานสำหรับกรรมการหลักสูตร |  |  |  |  | resources none → All |
| 43 | **ทดสอบการทำงานร่วมกัน** |  |  |  |  | resources none → All |
| 44 | ทดสอบการทำงาน Backend กับ Model |  |  |  |  | resources none → All |
| 45 | ทดสอบการทำงาน Frontend กับ Backend |  |  |  |  | resources none → All |
| 46 | ทดสอบการทำงานทั้งหมด |  |  |  |  | resources none → All |
| 47 | **Deploy Production** |  |  |  |  | resources none → All |
| 48 | Deploy Django |  |  |  |  | resources none → Dev2 |
| 49 | Deploy React |  |  |  |  | resources none → Dev2 |
| 50 | ทดสอบการทำงาน Backend กับ Model (Deploy) |  |  |  |  | resources none → Dev1 |
| 51 | ทดสอบการทำงาน Frontend กับ Backend (Deploy) |  |  |  |  | resources none → Dev1 |
| 52 | ทดสอบการทำงานทั้งหมด |  |  |  |  | resources none → All |
| 53 | พัฒนาระบบ CI/CD |  |  |  |  | resources none → All |
| 54 | **สรุปผลทำ ปริญญานิพนธ์** |  |  |  |  | resources none → All |
| 55 | รายงานสำหรับ Project 1 |  |  |  |  | resources none → All |
| 56 | รายงานสำหรับ Project 2 |  |  |  |  | resources none → All |
| 57 | รวมรายงาน |  |  |  |  | resources none → All |

## Version 4 (saved 2022-09-01, file GrantChat.mpp)

Note of the change: Merge branch 'master' of https://github.com/MashMaleLLO/Project_APS_CE_Document

Last finish stays 2023-03-31. Complete tasks 4 → 8.

Added:

| ID | Task | Duration | Start | Finish | Predecessors | Constraint | Resources |
| --- | --- | --- | --- | --- | --- | --- | --- |
| 2 | **เตรียม Docker** | 7d? | 2022-09-01 A | 2022-09-08 A | 1 |  | Dev2 |
| 3 | Docker Image สำหรับ Django | 3d? | 2022-09-01 A | 2022-09-03 A |  | start no earlier than 2022-09-01 |  |
| 4 | Docker Image สำหรับ MariaDB | 2d? | 2022-09-03 A | 2022-09-05 A |  | finish no earlier than 2022-09-05 |  |
| 5 | Docker Image สำหรับ React | 2d? | 2022-09-06 A | 2022-09-07 A |  | finish no earlier than 2022-09-07 |  |
| 6 | Compose Image Django และ MariaDB | 1d? | 2022-09-07 A | 2022-09-07 A | 3, 4 | start no earlier than 2022-09-07 |  |
| 7 | Compose Image React | 1d? | 2022-09-08 A | 2022-09-08 A | 5 | start no earlier than 2022-09-08 |  |

Changed:

| ID | Task | Start | Finish | Duration | Complete | Total float | Predecessors | Other |
| --- | --- | --- | --- | --- | --- | --- | --- | --- |
| 1 | ศึกษาทฤษฎีที่เกี่ยวข้อง |  |  | 23d? → 17.25d? | 25% → 50% | 0d → 165d |  | resources All → Dev1; Dev2 |
| 8 | **เตรียม Server** |  |  | 6d? → 7d? | 80% → 50% |  | 1 → none |  |
| 9 | ติดตั้ง Maria DB |  |  |  |  |  |  | was named ติดตั้ง SQL DB |
| 10 | ติดตั้ง Python |  | 2022-09-04 A → 2022-09-04 |  | 100% → 75% |  |  |  |
| 11 | ติดตั้ง Django Framework | 2022-09-05 A → 2022-09-05 |  |  | 80% → 0% |  |  |  |
| 22 | พัฒนา Model สำหรับหมวด Hardware |  | 2022-09-29 → 2022-09-30 (+1d) | 6d → 7d |  |  |  |  |
| 23 | พัฒนา Model สำหับหมวด Network |  | 2022-10-07 → 2022-10-09 (+2d) | 6d → 7d |  |  |  |  |
| 29 | **พัฒนา Django Web App** | 2022-12-15 A |  |  | 0% → 2% |  |  | resources All → Dev1; Dev2 |
| 37 | **พัฒนา API** | 2022-12-15 A |  |  | 0% → 5% |  |  |  |
| 38 | พัฒนา API Simple CSV Generator | 2022-12-15 A |  |  | 0% → 25% |  |  |  |
| 45 | **พัฒนา Frontend** |  |  |  |  |  |  | resources All → Dev1; Dev2 |
| 46 | พัฒนาหน้าการใช้งานสำหรับบุคคทั่วไป | 2023-01-16 → 2023-01-19 (+3d) |  | 6d? → 3d? |  |  |  | resources All → Dev1; Dev2 |
| 47 | พัฒนาหน้าการใช้งานสำหรับนักศึกษา | 2023-01-24 → 2023-01-27 (+3d) |  | 6d? → 3d? |  |  |  | resources All → Dev1; Dev2 |
| 48 | พัฒนาหน้าการใช้งานสำหรับกรรมการหลักสูตร | 2023-02-01 → 2023-02-03 (+2d) |  | 5d? → 2.5d? |  | 31d → 36d |  | resources All → Dev1; Dev2 |
| 49 | **ทดสอบการทำงานร่วมกัน** |  |  |  |  |  |  | resources All → Dev1; Dev2 |
| 50 | ทดสอบการทำงาน Backend กับ Model |  | 2023-02-12 → 2023-02-09 (-3d) | 4d? → 2d? |  | 31d → 36d |  | resources All → Dev1; Dev2 |
| 51 | ทดสอบการทำงาน Frontend กับ Backend | 2023-02-13 → 2023-02-14 (+1d) | 2023-02-16 → 2023-02-15 (-1d) | 4d? → 2d? |  | 31d → 33d |  | resources All → Dev1; Dev2 |
| 52 | ทดสอบการทำงานทั้งหมด | 2023-02-17 → 2023-02-20 (+3d) |  | 2d? → 1d? |  |  |  | resources All → Dev1; Dev2 |
| 53 | **Deploy Production** |  |  |  |  |  |  | resources All → Dev1; Dev2 |
| 58 | ทดสอบการทำงานทั้งหมด |  | 2023-03-07 → 2023-03-03 (-4d) | 4d? → 2d? |  | 12d → 17d |  | resources All → Dev1; Dev2 |
| 59 | พัฒนาระบบ CI/CD |  | 2023-03-15 → 2023-03-10 (-5d) | 6d? → 3d? |  | 12d → 15d |  | resources All → Dev1; Dev2 |
| 60 | **สรุปผลทำ ปริญญานิพนธ์** |  |  |  |  |  |  | resources All → Dev1; Dev2 |
| 61 | รายงานสำหรับ Project 1 | 2022-11-15 → 2022-11-24 (+9d) |  | 15d? → 7.5d? |  |  |  | resources All → Dev1; Dev2 |
| 62 | รายงานสำหรับ Project 2 | 2023-03-01 → 2023-03-08 (+7d) |  | 11d? → 5.5d? |  |  |  | resources All → Dev1; Dev2 |
| 63 | รวมรายงาน |  | 2023-03-31 → 2023-03-23 (-8d) | 13d? → 6.5d? |  | 0d → 6.5d |  | resources All → Dev1; Dev2 |

## Version 5 (saved 2022-09-04, file GrantChat.mpp)

Note of the change: update grantchart.

Last finish stays 2023-03-31.

Changed:

| ID | Task | Start | Complete | Total float |
| --- | --- | --- | --- | --- |
| 13 | **เตรียม Data สำหรับการพัฒนา** |  | 67% → 72% |  |
| 17 | Clean Data | 2022-09-14 A | 0% → 25% | 151d → 0.25d |
| 18 | Transfrom data | 2022-09-15 A | 0% → 25% |  |

## Version 6 (saved 2022-09-05, file GanttChart.mpp)

Note of the change: เพิ่มข้อมูลวิชาเรียนปี64

Last finish stays 2023-03-31.

Changed:

| ID | Task | Complete |
| --- | --- | --- |
| 1 | ศึกษาทฤษฎีที่เกี่ยวข้อง | 50% → 75% |

## Version 7 (saved 2022-09-11, file APS_CE GanttChart.mpp)

Note of the change: แก้ชื่อ ganttchart

Last finish stays 2023-03-31.

Added:

| ID | Task | Duration | Start | Finish | Resources |
| --- | --- | --- | --- | --- | --- |
| 1 | **Analytics and Prediction System for CE Curriculum administrators** | 243d | 2022-08-01 A | 2023-03-31 | 62010299; 62010465 |

Changed:

| ID | Task | Start | Finish | Duration | Complete | Total float | Predecessors | Other |
| --- | --- | --- | --- | --- | --- | --- | --- | --- |
| 2 | ศึกษาทฤษฎีที่เกี่ยวข้อง |  |  | 17.25d? → 30d |  | 165d → none |  | constraint finish no earlier than 2022-08-31 → none; resources Dev1; Dev2 → 62010299; 62010465; baseline start none → 2022-08-01; baseline finish none → 2022-08-31 |
| 3 | **เตรียม Docker** |  |  | 7d? → 8d |  |  | 2 → none | resources Dev2 → 62010465 |
| 4 | Docker Image สำหรับ Django |  |  | 3d? → 3d |  |  |  | constraint start no earlier than 2022-09-01 → none; resources none → 62010465; baseline start none → 2022-09-01; baseline finish none → 2022-09-03 |
| 5 | Docker Image สำหรับ MariaDB |  |  | 2d? → 3d |  |  |  | constraint finish no earlier than 2022-09-05 → none; resources none → 62010465; baseline start none → 2022-09-03; baseline finish none → 2022-09-05 |
| 6 | Docker Image สำหรับ React |  |  | 2d? → 2d |  |  |  | constraint finish no earlier than 2022-09-07 → none; resources none → 62010465; baseline start none → 2022-09-06; baseline finish none → 2022-09-07 |
| 7 | Compose Image Django และ MariaDB |  |  | 1d? → 1d |  |  |  | constraint start no earlier than 2022-09-07 → none; resources none → 62010465; baseline start none → 2022-09-07; baseline finish none → 2022-09-07 |
| 8 | Compose Image React |  |  | 1d? → 1d |  |  |  | constraint start no earlier than 2022-09-08 → none; resources none → 62010465; baseline start none → 2022-09-08; baseline finish none → 2022-09-08 |
| 9 | **เตรียม Server** |  | 2022-09-08 → 2022-09-07 (-1d) | 7d? → 7d |  | none → 0d |  | resources Dev1 → 62010299 |
| 10 | ติดตั้ง Maria DB |  |  | 2d? → 2d |  |  |  | constraint start no earlier than 2022-09-01 → none; resources Dev1 → 62010299; baseline start none → 2022-09-01; baseline finish none → 2022-09-02 |
| 11 | ติดตั้ง Python |  |  |  |  |  |  | constraint start no earlier than 2022-09-03 → none; resources Dev1 → 62010299; baseline start none → 2022-09-03; baseline finish none → 2022-09-04 |
| 12 | ติดตั้ง Django Framework |  |  | 2d? → 2d |  | 160d → none |  | constraint finish no earlier than 2022-09-06 → none; resources Dev1 → 62010299; baseline start none → 2022-09-05; baseline finish none → 2022-09-06 |
| 13 | ติดตั้ง React |  |  | 1d? → 1d |  | 159d → none |  | constraint start no earlier than 2022-09-07 → none; resources Dev1 → 62010299; baseline start none → 2022-09-07; baseline finish none → 2022-09-07 |
| 14 | **เตรียม Data สำหรับการพัฒนา** |  |  | 8d? → 8d |  | none → 0d |  | resources Dev1 → 62010299 |
| 15 | ออกแบบ Schema |  |  | 3d? → 3d |  |  |  | constraint start no earlier than 2022-09-08 → none; resources Dev1 → 62010299; baseline start none → 2022-09-08; baseline finish none → 2022-09-10 |
| 16 | ออกแบบ Relational Database |  |  | 3d? → 3d |  |  | 15 → none | constraint finish no earlier than 2022-09-13 → none; resources Dev1 → 62010299; baseline start none → 2022-09-11; baseline finish none → 2022-09-13 |
| 17 | นำข้อมูลเข้า Database | 2022-09-13 → 2022-09-14 (+1d) | 2022-09-13 → 2022-09-14 (+1d) | 1d? → 1d |  | 0.25d → none | none → 15, 16 | constraint start no earlier than 2022-09-13 → none; resources Dev1 → 62010299; baseline start none → 2022-09-14; baseline finish none → 2022-09-14 |
| 18 | Clean Data |  |  | 1d? → 1d |  | 0.25d → none | 17 → none | resources Dev1 → 62010299; baseline start none → 2022-09-14; baseline finish none → 2022-09-14 |
| 19 | Transfrom data |  |  | 1d? → 1d |  | 151d → none | 18 → none | resources Dev1 → 62010299; baseline start none → 2022-09-15; baseline finish none → 2022-09-15 |
| 20 | **พัฒนา Similarity Model** |  |  | 31d? → 38d | 3% → 21% | none → 0d |  | resources Dev2 → 62010465 |
| 21 | ทดลอง Model KNN และ Cosine |  |  | 13d? → 15d | 10% → 50% | 110d → none |  | constraint finish no earlier than 2022-09-22 → none; resources Dev2 → 62010465; baseline start none → 2022-09-08; baseline finish none → 2022-09-22 |
| 22 | พ้ฒนา Model สำหรับหมวด Software | 2022-09-23 A |  | 7d? → 8d | 0% → 25% | 110d → none |  | constraint start no earlier than 2022-09-23 → none; resources Dev2 → 62010465; baseline start none → 2022-09-23; baseline finish none → 2022-09-30 |
| 23 | พัฒนา Model สำหรับหมวด Hardware |  |  | 7d → 8d |  |  |  | constraint start no earlier than 2022-10-01 → none; resources Dev2 → 62010465; baseline start none → 2022-09-23; baseline finish none → 2022-09-30 |
| 24 | พัฒนา Model สำหับหมวด Network |  |  | 7d → 9d |  |  |  | constraint start no earlier than 2022-10-01 → none; resources Dev2 → 62010465; baseline start none → 2022-10-01; baseline finish none → 2022-10-09 |
| 25 | Test Model |  |  |  |  |  |  | resources Dev2 → 62010465; baseline start none → 2022-10-10; baseline finish none → 2022-10-15 |
| 26 | **พัฒนา Job Classification Model** |  |  | 24d? → 31d |  | none → 0d |  | resources Dev1 → 62010299 |
| 27 | ทดลอง Model KNN และ Decision Tree |  |  | 14d? → 17d |  | 82d → none |  | constraint finish no earlier than 2022-11-01 → none; resources Dev1 → 62010299; baseline start none → 2022-10-16; baseline finish none → 2022-11-01 |
| 28 | พัฒนา Model Classification |  |  | 6d? → 8d |  | 82d → none |  | constraint start no earlier than 2022-11-02 → none; resources Dev1 → 62010299; baseline start none → 2022-11-02; baseline finish none → 2022-11-09 |
| 29 | Test Model |  |  | 4d? → 6d |  | 82d → none |  | constraint start no earlier than 2022-11-10 → none; resources Dev1 → 62010299; baseline start none → 2022-11-10; baseline finish none → 2022-11-15 |
| 30 | **พัฒนา Django Web App** | 2022-12-15 A → 2022-10-16 A (-60d) |  | 72d? → 151d |  | none → 0d |  | resources Dev1; Dev2 → 62010299; 62010465 |
| 31 | **พัฒนา Backend Function** | 2022-12-15 → 2022-10-16 (-60d) | 2023-01-15 → 2023-01-13 (-2d) | 26d? → 90d |  | none → 0d |  | resources Dev1 → 62010465 |
| 32 | พัฒนา Function Map Subject Group |  |  | 4d? → 6d |  | 57d → none |  | constraint finish no earlier than 2022-12-20 → none; resources Dev1 → 62010465; baseline start none → 2022-12-15; baseline finish none → 2022-12-20 |
| 33 | พัฒนา Call Fuction similarity หลักสูตรปกติ | 2022-12-22 → 2022-10-16 (-67d) | 2022-12-25 → 2022-10-19 (-67d) | 3d? → 4d |  | 56d → none | 32, 25, 29 → none | constraint finish no earlier than 2022-12-25 → none; resources Dev1 → 62010465; baseline start none → 2022-10-16; baseline finish none → 2022-10-19 |
| 34 | พัฒนา Call Fuction similarity หลักสูตรต่อเนื่อง | 2022-12-22 → 2022-10-16 (-67d) | 2022-12-25 → 2022-10-19 (-67d) | 3d? → 4d |  | 56d → none | 32, 25, 29 → none | constraint finish no earlier than 2022-12-25 → none; resources Dev1 → 62010465; baseline start none → 2022-10-16; baseline finish none → 2022-10-19 |
| 35 | พัฒนา Function Analytic Data |  |  | 11d? → 13d |  | 65d → none | 34, 32, 33 → none | constraint start no earlier than 2022-12-26 → none; resources Dev1 → 62010465; baseline start none → 2022-12-26; baseline finish none → 2023-01-07 |
| 36 | พัฒนา Function Sum Occupations |  |  |  |  |  |  | constraint start no earlier than 2023-01-08 → none; resources Dev1 → 62010465; baseline start none → 2023-01-08; baseline finish none → 2023-01-10 |
| 37 | พัฒนา Function Recommend Elective Subject |  |  | 3d? → 3d |  | 59d → none |  | constraint finish no earlier than 2023-01-13 → none; resources Dev1 → 62010465; baseline start none → 2023-01-11; baseline finish none → 2023-01-13 |
| 38 | **พัฒนา API** |  |  | 26d? → 32d | 5% → 6% | none → 0d |  | resources Dev2 → 62010299 |
| 39 | พัฒนา API Simple CSV Generator |  |  | 6d? → 8d |  | 78d → none |  | constraint start no earlier than 2022-12-15 → none; resources Dev2 → 62010299; baseline start none → 2022-12-15; baseline finish none → 2022-12-22 |
| 40 | พัฒนา API Request All Prediction Handler |  |  | 6d? → 8d |  | 56d → none |  | resources Dev2 → 62010299; baseline start none → 2022-12-26; baseline finish none → 2023-01-02 |
| 41 | พัฒนา API Request All Outcome Predict of All Student |  |  | 1d? → 1d |  | 69d → none |  | constraint start no earlier than 2022-12-29 → none; resources Dev2 → 62010299; baseline start none → 2023-01-03; baseline finish none → 2023-01-03 |
| 42 | พัฒนา API Calculate overall (old) Outcome |  |  | 3d → 4d |  |  |  | constraint start no earlier than 2022-12-31 → none; resources Dev2 → 62010299; baseline start none → 2022-12-31; baseline finish none → 2023-01-03 |
| 43 | พัฒนา API Request Elective Subject |  |  | 4d? → 4d |  | 64d → none | none → 33, 34 | constraint finish no earlier than 2023-01-08 → none; resources Dev2 → 62010299; baseline start none → 2023-01-05; baseline finish none → 2023-01-08 |
| 44 | พัฒนา API Add Update Edit |  |  | 5d? → 5d |  | 60d → none |  | constraint finish no earlier than 2023-01-12 → none; resources Dev2 → 62010299; baseline start none → 2023-01-08; baseline finish none → 2023-01-12 |
| 45 | พัฒนา API Login Handler |  |  | 3d? → 4d |  | 58d → none |  | constraint finish no earlier than 2023-01-15 → none; resources Dev2 → 62010299; baseline start none → 2023-01-12; baseline finish none → 2023-01-15 |
| 46 | **พัฒนา Frontend** | 2023-01-16 → 2023-01-19 (+3d) |  | 17d? → 20d |  | none → 0d |  | resources Dev1; Dev2 → 62010299 |
| 47 | พัฒนาหน้าการใช้งานสำหรับบุคคทั่วไป |  |  | 3d? → 5d |  | 52d → none |  | constraint finish no earlier than 2023-01-23 → none; resources Dev1; Dev2 → 62010299; baseline start none → 2023-01-19; baseline finish none → 2023-01-23 |
| 48 | พัฒนาหน้าการใช้งานสำหรับนักศึกษา |  |  | 3d? → 5d |  | 46d → none |  | constraint finish no earlier than 2023-01-31 → none; resources Dev1; Dev2 → 62010299; baseline start none → 2023-01-27; baseline finish none → 2023-01-31 |
| 49 | พัฒนาหน้าการใช้งานสำหรับกรรมการหลักสูตร |  |  | 2.5d? → 5d |  | 36d → none |  | constraint finish no earlier than 2023-02-07 → none; resources Dev1; Dev2 → 62010299; baseline start none → 2023-02-03; baseline finish none → 2023-02-07 |
| 50 | **ทดสอบการทำงานร่วมกัน** |  |  | 10d? → 13d |  | none → 0d | 49 → none | resources Dev1; Dev2 → 62010299; 62010465 |
| 51 | ทดสอบการทำงาน Backend กับ Model |  |  | 2d? → 2d |  | 36d → none | 20, 26, 38 → none | constraint start no earlier than 2023-02-08 → none; resources Dev1; Dev2 → 62010465; baseline start none → 2023-02-08; baseline finish none → 2023-02-09 |
| 52 | ทดสอบการทำงาน Frontend กับ Backend |  |  | 2d? → 2d |  | 33d → none | 51, 31, 38, 46 → none | constraint finish no earlier than 2023-02-15 → none; resources Dev1; Dev2 → 62010299; baseline start none → 2023-02-14; baseline finish none → 2023-02-15 |
| 53 | ทดสอบการทำงานทั้งหมด |  |  | 1d? → 1d |  | 31d → none |  | constraint finish no earlier than 2023-02-20 → none; resources Dev1; Dev2 → 62010299; 62010465; baseline start none → 2023-02-20; baseline finish none → 2023-02-20 |
| 54 | **Deploy Production** |  |  | 19d? → 23d |  | none → 0d | 31, 38, 46, 50 → none | resources Dev1; Dev2 → 62010299; 62010465 |
| 55 | Deploy Django |  |  | 5d? → 5d |  | 17d → none |  | constraint start no earlier than 2023-02-21 → none; resources Dev2 → 62010465; baseline start none → 2023-02-21; baseline finish none → 2023-02-25 |
| 56 | Deploy React |  |  | 5d? → 5d |  | 17d → none |  | constraint finish no earlier than 2023-02-25 → none; resources Dev2 → 62010465; baseline start none → 2023-02-21; baseline finish none → 2023-02-25 |
| 57 | ทดสอบการทำงาน Backend กับ Model (Deploy) |  |  | 4d? → 4d |  | 17d → none |  | constraint finish no earlier than 2023-03-01 → none; resources Dev1 → 62010465; baseline start none → 2023-02-26; baseline finish none → 2023-03-01 |
| 58 | ทดสอบการทำงาน Frontend กับ Backend (Deploy) |  |  | 4d? → 4d |  | 17d → none |  | constraint finish no earlier than 2023-03-01 → none; resources Dev1 → 62010299; baseline start none → 2023-02-26; baseline finish none → 2023-03-01 |
| 59 | ทดสอบการทำงานทั้งหมด |  |  | 2d? → 2d |  | 17d → none | 58, 55, 56, 57 → 57, 58 | resources Dev1; Dev2 → 62010299; 62010465; baseline start none → 2023-03-02; baseline finish none → 2023-03-03 |
| 60 | พัฒนาระบบ CI/CD |  | 2023-03-10 → 2023-03-15 (+5d) | 3d? → 8d |  | 15d → none |  | constraint start no earlier than 2023-03-08 → none; resources Dev1; Dev2 → 62010299; 62010465; baseline start none → 2023-03-08; baseline finish none → 2023-03-10 |
| 61 | **สรุปผลทำ ปริญญานิพนธ์** | 2022-11-15 → 2022-11-24 (+9d) |  | 106d? → 128d |  |  |  | resources Dev1; Dev2 → 62010299; 62010465 |
| 62 | รายงานสำหรับ Project 1 |  |  | 7.5d? → 12d |  | 91d → none |  | constraint finish no earlier than 2022-12-05 → none; resources Dev1; Dev2 → 62010299; 62010465; baseline start none → 2022-11-24; baseline finish none → 2022-12-05 |
| 63 | รายงานสำหรับ Project 2 |  |  | 5.5d? → 8d |  | 12d → none |  | constraint finish no earlier than 2023-03-15 → none; resources Dev1; Dev2 → 62010299; 62010465; baseline start none → 2023-03-08; baseline finish none → 2023-03-15 |
| 64 | รวมรายงาน |  |  | 6.5d? → 9d |  | 6.5d → none |  | constraint start no earlier than 2023-03-15 → none; resources Dev1; Dev2 → 62010299; 62010465; baseline start none → 2023-03-15; baseline finish none → 2023-03-23 |

## Version 8 (saved 2022-09-19, file APS_CE GanttChart.mpp)

Note of the change: Merge remote-tracking branch 'origin/master'

Last finish stays 2023-03-31. Complete tasks 8 → 12.

Added:

| ID | Task | Duration | Start | Finish | Predecessors | Resources |
| --- | --- | --- | --- | --- | --- | --- |
| 20 | **พัฒนา Function NLP สำหรับจับกลุ่มวิชา** | 22d | 2022-09-09 A | 2022-09-30 |  | 62010299 |
| 21 | ศึกษา NLP และทดลองใช้งาน | 5d | 2022-09-09 A | 2022-09-13 A |  | 62010299 |
| 22 | พัฒนา NLP สำหรับจับกลุ่ม วิชาบังคับ และ วิชาเลือกภาค | 7d | 2022-09-14 A | 2022-09-20 A | 21 | 62010299 |
| 23 | Test Function NLP and Tuning | 10d | 2022-09-21 A | 2022-09-30 | 22 | 62010299 |

Removed: 24 พัฒนา Model สำหับหมวด Network

Changed:

| ID | Task | Start | Finish | Duration | Complete | Predecessors | Other |
| --- | --- | --- | --- | --- | --- | --- | --- |
| 1 | **Analytics and Prediction System for CE Curriculum administrators** |  |  |  | 19% → 28% |  |  |
| 24 | **พัฒนา Similarity Model** |  |  |  | 21% → 59% |  |  |
| 25 | ทดลองใช้งาน Surprise Scikit learn |  | 2022-09-22 A |  | 50% → 100% |  | was named ทดลอง Model KNN และ Cosine |
| 26 | พัฒนา Model Similarity รุ่น prototype |  | 2022-09-30 A |  | 25% → 100% |  | was named พ้ฒนา Model สำหรับหมวด Software |
| 27 | พัฒนา Model Similarity รุ่น Optimized | 2022-09-23 → 2022-09-30 (+7d) | 2022-09-30 → 2022-10-09 (+9d) | 8d → 10d |  |  | was named พัฒนา Model สำหรับหมวด Hardware |
| 28 | Test Model |  |  |  |  | 26, 27, พัฒนา Model สำหับหมวด Network → 26, 27 |  |

## Version 9 (saved 2022-09-30, file APS_CE GanttChart.mpp)

Note of the change: แก้ Ganttchart

Last finish stays 2023-03-31.

Changed:

| ID | Task | Other |
| --- | --- | --- |
| 19 | Transfrom Data | was named Transfrom data |

## Version 10 (saved 2022-10-09, file APS_CE GanttChart.mpp)

Note of the change: Merge branch 'master' of https://github.com/MashMaleLLO/Project_APS_CE_Document

Last finish stays 2023-03-31. Complete tasks 12 → 14.

Changed:

| ID | Task | Start | Finish | Complete |
| --- | --- | --- | --- | --- |
| 1 | **Analytics and Prediction System for CE Curriculum administrators** |  |  | 28% → 35% |
| 14 | **เตรียม Data สำหรับการพัฒนา** |  |  | 72% → 78% |
| 17 | นำข้อมูลเข้า Database | 2022-09-14 A |  | 0% → 50% |
| 20 | **พัฒนา Function NLP สำหรับจับกลุ่มวิชา** |  | 2022-09-30 A | 66% → 100% |
| 23 | Test Function NLP and Tuning |  | 2022-09-30 A | 25% → 100% |
| 24 | **พัฒนา Similarity Model** |  |  | 59% → 85% |
| 27 | พัฒนา Model Similarity รุ่น Optimized | 2022-09-30 A | 2022-10-09 A | 0% → 100% |
| 64 | **สรุปผลทำ ปริญญานิพนธ์** | 2022-11-24 A |  | 0% → 10% |
| 65 | รายงานสำหรับ Project 1 | 2022-11-24 A |  | 0% → 25% |

## Version 11 (saved 2022-10-15, file APS_CE GanttChart.mpp)

Note of the change: update grantt.

Last finish stays 2023-03-31. Complete tasks 14 → 15.

Changed:

| ID | Task | Start | Finish | Complete | Total float |
| --- | --- | --- | --- | --- | --- |
| 1 | **Analytics and Prediction System for CE Curriculum administrators** |  |  | 35% → 37% |  |
| 24 | **พัฒนา Similarity Model** |  | 2022-10-15 A | 85% → 100% | 0d → none |
| 28 | Test Model | 2022-10-10 A | 2022-10-15 A | 0% → 100% |  |

## Version 12 (saved 2022-10-18, file APS_CE GanttChart.mpp)

Note of the change: update gantt chart and progress report.

Last finish 2023-03-31 → 2023-03-15 (-16d). Complete tasks 15 → 16.

Removed: 1 Analytics and Prediction System for CE Curriculum administrators

Changed:

| ID | Task | Start | Finish | Duration | Complete | Total float | Other |
| --- | --- | --- | --- | --- | --- | --- | --- |
| 1 | ศึกษาทฤษฎีที่เกี่ยวข้อง |  |  |  |  |  | resources 62010299; 62010465 → 62010299 [50%]; 62010465 [50%] |
| 3 | Docker Image สำหรับ Django |  |  |  |  |  | resources 62010465 → none |
| 4 | Docker Image สำหรับ MariaDB |  |  |  |  |  | resources 62010465 → none |
| 5 | Docker Image สำหรับ React |  |  |  |  |  | resources 62010465 → none |
| 6 | Compose Image Django และ MariaDB |  |  |  |  |  | resources 62010465 → none |
| 7 | Compose Image React |  |  |  |  |  | resources 62010465 → none |
| 9 | ติดตั้ง Maria DB |  |  |  |  |  | resources 62010299 → none |
| 10 | ติดตั้ง Python |  | 2022-09-04 → 2022-09-03 A (-1d) | 2d → 0.5d | 75% → 100% |  | resources 62010299 → none |
| 11 | ติดตั้ง Django Framework | 2022-09-05 A |  |  | 0% → 13% |  | resources 62010299 → none |
| 12 | ติดตั้ง React |  |  |  |  |  | resources 62010299 → none |
| 13 | **เตรียม Data สำหรับการพัฒนา** |  | 2022-09-15 → 2022-09-16 (+1d) | 8d → 9d | 78% → 63% | 0d → none |  |
| 14 | ออกแบบ Schema |  |  |  |  |  | resources 62010299 → none |
| 15 | ออกแบบ Relational Database |  |  |  |  |  | resources 62010299 → none |
| 16 | นำข้อมูลเข้า Database |  |  | 1d → 0.5d |  |  | resources 62010299 → none |
| 17 | Clean Data |  | 2022-09-14 → 2022-09-15 (+1d) | 1d → 2d | 25% → 10% |  | resources 62010299 → none |
| 18 | Transfrom Data |  | 2022-09-15 → 2022-09-16 (+1d) | 1d → 2d | 25% → 10% |  | resources 62010299 → none |
| 20 | ศึกษา NLP และทดลองใช้งาน |  |  |  |  |  | resources 62010299 → none |
| 21 | พัฒนา NLP สำหรับจับกลุ่ม วิชาบังคับ และ วิชาเลือกภาค |  |  |  |  |  | resources 62010299 → none |
| 22 | Test Function NLP and Tuning |  |  |  |  |  | resources 62010299 → none |
| 24 | ทดลองใช้งาน Surprise Scikit learn |  |  |  |  |  | resources 62010465 → none |
| 25 | พัฒนา Model Similarity รุ่น prototype |  |  |  |  |  | resources 62010465 → none |
| 26 | พัฒนา Model Similarity รุ่น Optimized |  |  |  |  |  | resources 62010465 → none |
| 27 | Test Model |  |  |  |  |  | resources 62010465 → none |
| 28 | **พัฒนา Job Classification Model** |  |  |  |  |  | constraint none → finish no later than 2022-11-15 |
| 29 | ทดลอง Model KNN และ Decision Tree |  |  |  |  |  | resources 62010299 → none |
| 30 | พัฒนา Model Classification |  |  |  |  |  | resources 62010299 → none |
| 31 | Test Model |  |  |  |  |  | resources 62010299 → none |
| 32 | **พัฒนา Django Web App** |  |  |  | 2% → 6% |  | constraint none → finish no later than 2023-03-15; resources 62010299; 62010465 → none |
| 33 | **พัฒนา Backend Function** | 2022-10-16 A |  |  | 0% → 15% |  |  |
| 34 | พัฒนา Function Map Subject Group | 2022-12-15 A |  |  | 0% → 50% |  | resources 62010465 → none |
| 35 | พัฒนา Call Fuction similarity หลักสูตรปกติ | 2022-10-16 A |  |  | 0% → 25% |  | resources 62010465 → none |
| 36 | พัฒนา Call Fuction similarity หลักสูตรต่อเนื่อง | 2022-10-16 A |  |  | 0% → 25% |  | resources 62010465 → none |
| 37 | พัฒนา Function Analytic Data |  |  |  |  |  | resources 62010465 → none |
| 38 | พัฒนา Function Sum Occupations |  |  |  |  |  | resources 62010465 → none |
| 39 | พัฒนา Function Recommend Elective Subject |  |  |  |  |  | resources 62010465 → none |
| 40 | **พัฒนา API** |  |  |  | 6% → 5% |  |  |
| 41 | พัฒนา API Simple CSV Generator |  | 2022-12-22 → 2022-12-20 (-2d) | 8d → 6d |  |  | resources 62010299 → none |
| 42 | พัฒนา API Request All Prediction Handler |  |  |  |  |  | resources 62010299 → none |
| 43 | พัฒนา API Request All Outcome Predict of All Student |  |  |  |  |  | resources 62010299 → none |
| 44 | พัฒนา API Calculate overall (old) Outcome |  |  |  |  |  | resources 62010299 → none |
| 45 | พัฒนา API Request Elective Subject |  |  |  |  |  | resources 62010299 → none |
| 46 | พัฒนา API Add Update Edit |  |  |  |  |  | resources 62010299 → none |
| 47 | พัฒนา API Login Handler |  |  |  |  |  | resources 62010299 → none |
| 49 | พัฒนาหน้าการใช้งานสำหรับบุคคทั่วไป |  |  |  |  |  | resources 62010299 → none |
| 50 | พัฒนาหน้าการใช้งานสำหรับนักศึกษา |  |  |  |  |  | resources 62010299 → none |
| 51 | พัฒนาหน้าการใช้งานสำหรับกรรมการหลักสูตร |  |  |  |  |  | resources 62010299 → none |
| 52 | **ทดสอบการทำงานร่วมกัน** |  |  |  |  |  | resources 62010299; 62010465 → none |
| 55 | ทดสอบการทำงานทั้งหมด |  |  |  |  |  | resources 62010299; 62010465 → 62010299 [50%]; 62010465 [50%] |
| 56 | **Deploy Production** |  |  |  |  |  | resources 62010299; 62010465 → none |
| 61 | ทดสอบการทำงานทั้งหมด |  |  |  |  |  | resources 62010299; 62010465 → 62010299 [50%]; 62010465 [50%] |
| 62 | พัฒนาระบบ CI/CD |  |  |  |  |  | resources 62010299; 62010465 → 62010299 [50%]; 62010465 [50%] |
| 63 | **สรุปผลทำ ปริญญานิพนธ์** | 2022-11-24 A → 2022-08-01 A (-115d) | 2023-03-31 → 2023-03-15 (-16d) | 128d → 227d | 10% → 27% |  | resources 62010299; 62010465 → none |
| 64 | รายงานสำหรับ Project 1 | 2022-11-24 A → 2022-08-01 A (-115d) | 2022-12-05 → 2022-11-15 (-20d) | 12d → 107d | 25% → 50% |  | resources 62010299; 62010465 → 62010299 [50%]; 62010465 [50%] |
| 65 | รายงานสำหรับ Project 2 | 2023-03-08 → 2022-12-15 (-83d) | 2023-03-15 → 2023-02-15 (-28d) | 8d → 63d |  |  | resources 62010299; 62010465 → 62010299 [50%]; 62010465 [50%] |
| 66 | รวมรายงาน | 2023-03-15 → 2023-02-15 (-28d) | 2023-03-23 → 2023-03-15 (-8d) | 9d → 29d |  |  | resources 62010299; 62010465 → 62010299 [50%]; 62010465 [50%] |

## Version 13 (saved 2022-10-31, file APS_CE GanttChart.mpp)

Note of the change: Edit บท 2.

Last finish stays 2023-03-15. Complete tasks 16 → 18.

Changed:

| ID | Task | Start | Finish | Duration | Complete |
| --- | --- | --- | --- | --- | --- |
| 13 | **เตรียม Data สำหรับการพัฒนา** |  |  |  | 63% → 89% |
| 16 | นำข้อมูลเข้า Database |  |  |  | 50% → 75% |
| 17 | Clean Data |  |  |  | 10% → 75% |
| 18 | Transfrom Data |  |  |  | 10% → 75% |
| 28 | **พัฒนา Job Classification Model** | 2022-10-16 A |  |  | 0% → 90% |
| 29 | ทดลอง Model KNN และ Decision Tree | 2022-10-16 A | 2022-11-01 → 2022-10-31 A (-1d) | 17d → 16d | 0% → 100% |
| 30 | พัฒนา Model Classification | 2022-11-02 A | 2022-11-09 A |  | 0% → 100% |
| 31 | Test Model | 2022-11-10 A |  |  | 0% → 50% |
| 32 | **พัฒนา Django Web App** |  |  |  | 6% → 8% |
| 40 | **พัฒนา API** |  |  |  | 5% → 14% |
| 41 | พัฒนา API Simple CSV Generator |  |  |  | 25% → 75% |

## Version 14 (saved 2022-11-13, file APS_CE GanttChart.mpp)

Note of the change: almost complete progress 6 report and update some progress on gantt chart.

Last finish stays 2023-03-15.

Changed:

| ID | Task | Complete |
| --- | --- | --- |
| 28 | **พัฒนา Job Classification Model** | 90% → 95% |
| 31 | Test Model | 50% → 75% |
| 63 | **สรุปผลทำ ปริญญานิพนธ์** | 27% → 40% |
| 64 | รายงานสำหรับ Project 1 | 50% → 75% |

## Version 15 (saved 2022-11-25, file APS_CE GanttChart.mpp)

Note of the change: complete progress report 6

Last finish stays 2023-03-15.

Changed:

| ID | Task | Complete |
| --- | --- | --- |
| 32 | **พัฒนา Django Web App** | 8% → 12% |
| 33 | **พัฒนา Backend Function** | 15% → 26% |
| 34 | พัฒนา Function Map Subject Group | 50% → 75% |
| 35 | พัฒนา Call Fuction similarity หลักสูตรปกติ | 25% → 50% |
| 36 | พัฒนา Call Fuction similarity หลักสูตรต่อเนื่อง | 25% → 50% |
