# Curriculum Output Prediction From Student Academic Data

How a schedule from MS Project changed from version to version. A marks actual dates.

## Version 1 (saved 2023-02-03)

Note of the change: Complete all progress report 2.

| ID | WBS | Task | Duration | Start | Finish | Predecessors | Complete | Total float | Constraint |
| --- | --- | --- | --- | --- | --- | --- | --- | --- | --- |
| 1 |  | ศึกษาทฤษฎีที่เกี่ยวข้อง | 30d | 2022-08-01 A | 2022-08-31 |  | 75% |  |  |
| 2 | 2 | **เตรียม Docker** | 8d | 2022-09-01 A | 2022-09-08 A |  | 100% |  |  |
| 3 |  | Docker Image สำหรับ Django | 3d | 2022-09-01 A | 2022-09-03 A |  | 100% |  |  |
| 4 |  | Docker Image สำหรับ MariaDB | 3d | 2022-09-03 A | 2022-09-05 A |  | 100% |  |  |
| 5 |  | Docker Image สำหรับ React | 2d | 2022-09-06 A | 2022-09-07 A |  | 100% |  |  |
| 6 |  | Compose Image Django และ MariaDB | 1d | 2022-09-07 A | 2022-09-07 A | 3, 4 | 100% |  |  |
| 7 |  | Compose Image React | 1d | 2022-09-08 A | 2022-09-08 A | 5 | 100% |  |  |
| 8 | 3 | **เตรียม Server** | 7d | 2022-09-01 A | 2022-09-07 A |  | 100% |  |  |
| 9 |  | ติดตั้ง Docker Compose Backend และ DataBase | 2d | 2022-09-01 A | 2022-09-02 A |  | 100% |  |  |
| 10 |  | ติดตั้ง Docker Compose Frontend | 0.5d | 2022-09-03 A | 2022-09-03 A |  | 100% |  |  |
| 11 |  | ทดสอบการทำงานร่วมกัน | 2d | 2022-09-05 A | 2022-09-06 A |  | 100% |  |  |
| 12 |  | ทดสอบการเข้าถึง Web App จากภายนอก | 1d | 2022-09-07 A | 2022-09-07 A |  | 100% |  |  |
| 13 | 4 | **เตรียม Data สำหรับการพัฒนา** | 9d | 2022-09-08 A | 2022-09-16 |  | 89% |  |  |
| 14 |  | ออกแบบ Schema | 3d | 2022-09-08 A | 2022-09-10 A |  | 100% |  |  |
| 15 |  | ออกแบบ Relational Database | 3d | 2022-09-11 A | 2022-09-13 A |  | 100% |  |  |
| 16 |  | นำข้อมูลเข้า Database | 0.5d | 2022-09-14 A | 2022-09-14 | 14, 15 | 75% |  |  |
| 17 |  | Clean Data | 2d | 2022-09-14 A | 2022-09-15 |  | 75% |  |  |
| 18 |  | Transfrom Data | 2d | 2022-09-15 A | 2022-09-16 |  | 75% |  |  |
| 19 | 5 | **พัฒนา Function NLP สำหรับจับกลุ่มวิชา** | 22d | 2022-09-09 A | 2022-09-30 A |  | 100% |  |  |
| 20 |  | ศึกษา NLP และทดลองใช้งาน | 5d | 2022-09-09 A | 2022-09-13 A |  | 100% |  |  |
| 21 |  | พัฒนา NLP สำหรับจับกลุ่ม วิชาบังคับ และ วิชาเลือกภาค | 7d | 2022-09-14 A | 2022-09-20 A | 20 | 100% |  |  |
| 22 |  | Test Function NLP and Tuning | 10d | 2022-09-21 A | 2022-09-30 A | 21 | 100% |  |  |
| 23 | 6 | **พัฒนา Similarity Model** | 38d | 2022-09-08 A | 2022-10-15 A |  | 100% |  |  |
| 24 |  | ทดลองใช้งาน Surprise Scikit learn | 15d | 2022-09-08 A | 2022-09-22 A |  | 100% |  |  |
| 25 |  | พัฒนา Model Similarity รุ่น prototype | 8d | 2022-09-23 A | 2022-09-30 A | 24 | 100% |  |  |
| 26 |  | พัฒนา Model Similarity รุ่น Optimized | 10d | 2022-09-30 A | 2022-10-09 A | 24 | 100% |  |  |
| 27 |  | Test Model | 6d | 2022-10-10 A | 2022-10-15 A | 25, 26 | 100% |  |  |
| 28 | 7 | **พัฒนา Job Classification Model** | 31d | 2022-10-16 A | 2022-11-15 |  | 95% | 0d | finish no later than 2022-11-15 |
| 29 |  | ทดลอง Model KNN และ Decision Tree | 16d | 2022-10-16 A | 2022-10-31 A |  | 100% |  |  |
| 30 |  | พัฒนา Model Classification | 8d | 2022-11-02 A | 2022-11-09 A | 29 | 100% |  |  |
| 31 |  | Test Model | 6d | 2022-11-10 A | 2022-11-15 | 30 | 75% |  |  |
| 32 | 8 | **พัฒนา Django Web App** | 151d | 2022-10-16 A | 2023-03-15 |  | 21% | 0d | finish no later than 2023-03-15 |
| 33 | 8.1 | **พัฒนา Backend Function** | 90d | 2022-10-16 A | 2023-01-13 |  | 32% | 0d |  |
| 34 |  | พัฒนา Function Map Subject Group | 6d | 2022-12-15 A | 2022-12-20 |  | 75% |  |  |
| 35 |  | พัฒนา Call Fuction similarity หลักสูตรปกติ | 4d | 2022-10-16 A | 2022-10-19 |  | 75% |  |  |
| 36 |  | พัฒนา Call Fuction similarity หลักสูตรต่อเนื่อง | 4d | 2022-10-16 A | 2022-10-19 |  | 75% |  |  |
| 37 |  | พัฒนา Function Analytic Data | 13d | 2022-12-26 | 2023-01-07 |  |  |  |  |
| 38 |  | พัฒนา Function Sum Occupations | 3d | 2023-01-08 | 2023-01-10 |  |  |  |  |
| 39 |  | พัฒนา Function Recommend Elective Subject | 3d | 2023-01-11 | 2023-01-13 |  |  |  |  |
| 40 | 8.2 | **พัฒนา API** | 32d | 2022-12-15 A | 2023-01-15 |  | 42% | 0d |  |
| 41 |  | พัฒนา API Simple CSV Generator | 6d | 2022-12-15 A | 2022-12-20 |  | 75% |  |  |
| 42 |  | พัฒนา API Request All Prediction Handler | 8d | 2022-12-26 A | 2023-01-02 | 35, 36 | 50% |  |  |
| 43 |  | พัฒนา API Request All Outcome Predict of All Student | 1d | 2023-01-03 | 2023-01-03 | 42 |  |  |  |
| 44 |  | พัฒนา API Calculate overall (old) Outcome | 4d | 2022-12-31 | 2023-01-03 |  |  |  |  |
| 45 |  | พัฒนา API Request Elective Subject | 4d | 2023-01-05 | 2023-01-08 | 35, 36 |  |  |  |
| 46 |  | พัฒนา API Add Update Edit | 5d | 2023-01-08 A | 2023-01-12 A |  | 100% |  |  |
| 47 |  | พัฒนา API Login Handler | 4d | 2023-01-12 | 2023-01-15 |  |  |  |  |
| 48 | 8.3 | **พัฒนา Frontend** | 20d | 2023-01-19 | 2023-02-07 |  |  | 0d |  |
| 49 |  | พัฒนาหน้าการใช้งานสำหรับบุคคทั่วไป | 5d | 2023-01-19 | 2023-01-23 |  |  |  |  |
| 50 |  | พัฒนาหน้าการใช้งานสำหรับนักศึกษา | 5d | 2023-01-27 | 2023-01-31 |  |  |  |  |
| 51 |  | พัฒนาหน้าการใช้งานสำหรับกรรมการหลักสูตร | 5d | 2023-02-03 | 2023-02-07 |  |  |  |  |
| 52 | 8.4 | **ทดสอบการทำงานร่วมกัน** | 13d | 2023-02-08 | 2023-02-20 |  |  | 0d |  |
| 53 |  | ทดสอบการทำงาน Backend กับ Model | 2d | 2023-02-08 | 2023-02-09 |  |  |  |  |
| 54 |  | ทดสอบการทำงาน Frontend กับ Backend | 2d | 2023-02-14 | 2023-02-15 |  |  |  |  |
| 55 |  | ทดสอบการทำงานทั้งหมด | 1d | 2023-02-20 | 2023-02-20 | 53, 54 |  |  |  |
| 56 | 8.5 | **Deploy Production** | 23d | 2023-02-21 | 2023-03-15 |  |  | 0d |  |
| 57 |  | Deploy Django | 5d | 2023-02-21 | 2023-02-25 |  |  |  |  |
| 58 |  | Deploy React | 5d | 2023-02-21 | 2023-02-25 |  |  |  |  |
| 59 |  | ทดสอบการทำงาน Backend กับ Model (Deploy) | 4d | 2023-02-26 | 2023-03-01 | 57 |  |  |  |
| 60 |  | ทดสอบการทำงาน Frontend กับ Backend (Deploy) | 4d | 2023-02-26 | 2023-03-01 | 57, 58 |  |  |  |
| 61 |  | ทดสอบการทำงานทั้งหมด | 2d | 2023-03-02 | 2023-03-03 | 59, 60 |  |  |  |
| 62 |  | พัฒนาระบบ CI/CD | 8d | 2023-03-08 | 2023-03-15 | 61 |  |  |  |
| 63 | 9 | **สรุปผลทำ ปริญญานิพนธ์** | 227d | 2022-08-01 A | 2023-03-15 |  | 57% |  |  |
| 64 |  | รายงานสำหรับ Project 1 | 107d | 2022-08-01 A | 2022-11-15 A |  | 100% |  |  |
| 65 |  | รายงานสำหรับ Project 2 | 63d | 2022-12-15 A | 2023-02-15 |  | 10% |  |  |
| 66 |  | รวมรายงาน | 29d | 2023-02-15 | 2023-03-15 |  |  |  |  |

## Version 2 (saved 2023-02-24)

Note of the change: Complete progress report 3.

Last finish stays 2023-03-15. Complete tasks 22 → 30.

Changed:

| ID | Task | Start | Finish | Complete |
| --- | --- | --- | --- | --- |
| 1 | ศึกษาทฤษฎีที่เกี่ยวข้อง |  | 2022-08-31 A | 75% → 100% |
| 13 | **เตรียม Data สำหรับการพัฒนา** |  | 2022-09-16 A | 89% → 100% |
| 16 | นำข้อมูลเข้า Database |  | 2022-09-14 A | 75% → 100% |
| 17 | Clean Data |  | 2022-09-15 A | 75% → 100% |
| 18 | Transfrom Data |  | 2022-09-16 A | 75% → 100% |
| 32 | **พัฒนา Django Web App** |  |  | 21% → 36% |
| 33 | **พัฒนา Backend Function** |  |  | 32% → 45% |
| 34 | พัฒนา Function Map Subject Group |  | 2022-12-20 A | 75% → 100% |
| 38 | พัฒนา Function Sum Occupations | 2023-01-08 A | 2023-01-10 A | 0% → 100% |
| 40 | **พัฒนา API** |  |  | 42% → 59% |
| 41 | พัฒนา API Simple CSV Generator |  | 2022-12-20 A | 75% → 100% |
| 47 | พัฒนา API Login Handler | 2023-01-12 A | 2023-01-15 A | 0% → 100% |
| 48 | **พัฒนา Frontend** | 2023-01-19 A |  | 0% → 42% |
| 49 | พัฒนาหน้าการใช้งานสำหรับบุคคทั่วไป | 2023-01-19 A |  | 0% → 50% |
| 50 | พัฒนาหน้าการใช้งานสำหรับนักศึกษา | 2023-01-27 A |  | 0% → 25% |
| 51 | พัฒนาหน้าการใช้งานสำหรับกรรมการหลักสูตร | 2023-02-03 A |  | 0% → 50% |

## Version 3 (saved 2023-03-20)

Note of the change: Update progress 4

Last finish stays 2023-03-15. Complete tasks 30 → 34.

Changed:

| ID | Task | Start | Finish | Complete |
| --- | --- | --- | --- | --- |
| 32 | **พัฒนา Django Web App** |  |  | 36% → 65% |
| 33 | **พัฒนา Backend Function** |  |  | 45% → 94% |
| 37 | พัฒนา Function Analytic Data | 2022-12-26 A | 2023-01-07 A | 0% → 100% |
| 39 | พัฒนา Function Recommend Elective Subject | 2023-01-11 A | 2023-01-13 A | 0% → 100% |
| 40 | **พัฒนา API** |  |  | 59% → 93% |
| 42 | พัฒนา API Request All Prediction Handler |  |  | 50% → 75% |
| 43 | พัฒนา API Request All Outcome Predict of All Student | 2023-01-03 A |  | 0% → 75% |
| 44 | พัฒนา API Calculate overall (old) Outcome | 2022-12-31 A | 2023-01-03 A | 0% → 100% |
| 45 | พัฒนา API Request Elective Subject | 2023-01-05 A | 2023-01-08 A | 0% → 100% |
| 48 | **พัฒนา Frontend** |  |  | 42% → 75% |
| 49 | พัฒนาหน้าการใช้งานสำหรับบุคคทั่วไป |  |  | 50% → 75% |
| 50 | พัฒนาหน้าการใช้งานสำหรับนักศึกษา |  |  | 25% → 75% |
| 51 | พัฒนาหน้าการใช้งานสำหรับกรรมการหลักสูตร |  |  | 50% → 75% |
| 52 | **ทดสอบการทำงานร่วมกัน** | 2023-02-08 A |  | 0% → 40% |
| 53 | ทดสอบการทำงาน Backend กับ Model | 2023-02-08 A |  | 0% → 50% |
| 54 | ทดสอบการทำงาน Frontend กับ Backend | 2023-02-14 A |  | 0% → 50% |
| 63 | **สรุปผลทำ ปริญญานิพนธ์** |  |  | 57% → 70% |
| 65 | รายงานสำหรับ Project 2 |  |  | 10% → 50% |

## Version 4 (saved 2023-04-03)

Note of the change: 50% complete progress 5.

Last finish stays 2023-03-15. Complete tasks 34 → 53.

Changed:

| ID | Task | Start | Finish | Complete | Total float |
| --- | --- | --- | --- | --- | --- |
| 28 | **พัฒนา Job Classification Model** |  | 2022-11-15 A | 95% → 100% | 0d → none |
| 31 | Test Model |  | 2022-11-15 A | 75% → 100% |  |
| 32 | **พัฒนา Django Web App** |  | 2023-03-15 A | 65% → 100% | 0d → none |
| 33 | **พัฒนา Backend Function** |  | 2023-01-13 A | 94% → 100% | 0d → none |
| 35 | พัฒนา Call Fuction similarity หลักสูตรปกติ |  | 2022-10-19 A | 75% → 100% |  |
| 36 | พัฒนา Call Fuction similarity หลักสูตรต่อเนื่อง |  | 2022-10-19 A | 75% → 100% |  |
| 40 | **พัฒนา API** |  | 2023-01-15 A | 93% → 100% | 0d → none |
| 42 | พัฒนา API Request All Prediction Handler |  | 2023-01-02 A | 75% → 100% |  |
| 43 | พัฒนา API Request All Outcome Predict of All Student |  | 2023-01-03 A | 75% → 100% |  |
| 48 | **พัฒนา Frontend** |  | 2023-02-07 A | 75% → 100% | 0d → none |
| 49 | พัฒนาหน้าการใช้งานสำหรับบุคคทั่วไป |  | 2023-01-23 A | 75% → 100% |  |
| 50 | พัฒนาหน้าการใช้งานสำหรับนักศึกษา |  | 2023-01-31 A | 75% → 100% |  |
| 51 | พัฒนาหน้าการใช้งานสำหรับกรรมการหลักสูตร |  | 2023-02-07 A | 75% → 100% |  |
| 52 | **ทดสอบการทำงานร่วมกัน** |  | 2023-02-20 A | 40% → 100% | 0d → none |
| 53 | ทดสอบการทำงาน Backend กับ Model |  | 2023-02-09 A | 50% → 100% |  |
| 54 | ทดสอบการทำงาน Frontend กับ Backend |  | 2023-02-15 A | 50% → 100% |  |
| 55 | ทดสอบการทำงานทั้งหมด | 2023-02-20 A | 2023-02-20 A | 0% → 100% |  |
| 56 | **Deploy Production** | 2023-02-21 A | 2023-03-15 A | 0% → 100% | 0d → none |
| 57 | Deploy Django | 2023-02-21 A | 2023-02-25 A | 0% → 100% |  |
| 58 | Deploy React | 2023-02-21 A | 2023-02-25 A | 0% → 100% |  |
| 59 | ทดสอบการทำงาน Backend กับ Model (Deploy) | 2023-02-26 A | 2023-03-01 A | 0% → 100% |  |
| 60 | ทดสอบการทำงาน Frontend กับ Backend (Deploy) | 2023-02-26 A | 2023-03-01 A | 0% → 100% |  |
| 61 | ทดสอบการทำงานทั้งหมด | 2023-03-02 A | 2023-03-03 A | 0% → 100% |  |
| 62 | พัฒนาระบบ CI/CD | 2023-03-08 A | 2023-03-15 A | 0% → 100% |  |
| 63 | **สรุปผลทำ ปริญญานิพนธ์** |  | 2023-03-15 A | 70% → 100% |  |
| 65 | รายงานสำหรับ Project 2 |  | 2023-02-15 A | 50% → 100% |  |
| 66 | รวมรายงาน | 2023-02-15 A | 2023-03-15 A | 0% → 100% |  |
